# 1752538_HuynhGiaAnTien_ParkingLot

Schedule from MS Project, 2022-10-31 to 2023-02-24, status date 2022-12-03, costs in ₫, A marks actual dates.

## Calendars

- Standard: Mon-Fri 08:00-12:00, 14:00-18:00; Sat-Sun off.

## Resources

| Resource | Rate |
| --- | --- |
| Dinh Huy Thien - MNG/TEST | 93750 |
| Nguyen Minh Anh - DB/BE | 93750 |
| Huynh Gia An Tien - NET | 75000 |
| Nguyen Trung Nguyen - BA | 75000 |
| Nguyen Khuong - FE | 62500 |
| Lam Minh Quan - UI | 62500 |
| Nguyen Tien Duong - ELEC | 50000 |
| Database hosting |  |
| Server hosting |  |

## Schedule

| ID | WBS | Task | Type | Duration | Start | Finish | Predecessors | Complete | Remaining | Actual start | Baseline start | Baseline finish | Baseline duration | Baseline 1 start | Baseline 1 finish | Total slack | Constraint | Resources | Work | Actual work | Cost | Baseline cost | Actual cost |
| --- | --- | --- | --- | --- | --- | --- | --- | --- | --- | --- | --- | --- | --- | --- | --- | --- | --- | --- | --- | --- | --- | --- | --- |
| 1 | 1 | **IoT system** |  | 85d | 2022-10-31 A | 2023-02-24 |  | 55% | 38.25d |  | 2022-10-31 | 2023-02-24 | 85d | 2022-10-31 | 2023-02-24 |  |  |  | 865h | 511h | 65,231,250 | 65,231,250 | 34,731,250 |
| 2 | 1.1 | **Pre-development phase** |  | 4d | 2022-10-31 A | 2022-11-03 |  | 99% | 0.04d |  | 2022-10-31 | 2022-11-03 | 4d | 2022-10-31 | 2022-11-03 |  |  |  | 53h | 51h | 4,206,250 | 4,206,250 | 4,081,250 |
| 3 | 1.1.1 | Analysis and design | manual | 1d | 2022-10-31 A | 2022-10-31 A |  | 100% |  |  | 2022-10-31 | 2022-10-31 | 1d | 2022-10-31 | 2022-10-31 |  |  | Nguyen Trung Nguyen - BA; Dinh Huy Thien - MNG/TEST | 16h | 16h | 1,350,000 | 1,350,000 | 1,350,000 |
| 4 | 1.1.2 | **Documents** |  | 2d | 2022-11-01 A | 2022-11-02 A |  | 100% |  |  | 2022-11-01 | 2022-11-02 | 2d | 2022-11-01 | 2022-11-02 |  |  |  | 32h | 32h | 2,500,000 | 2,500,000 | 2,500,000 |
| 5 | 1.1.2.1 | Database design |  | 1d | 2022-11-01 A | 2022-11-02 A | 3 | 100% |  |  | 2022-11-01 | 2022-11-02 | 1d | 2022-11-01 | 2022-11-02 |  | start no earlier than 2022-11-01 | Nguyen Minh Anh - DB/BE | 8h | 8h | 750,000 | 750,000 | 750,000 |
| 6 | 1.1.2.2 | Software design |  | 1d | 2022-11-01 A | 2022-11-01 A | 3 | 100% |  |  | 2022-11-01 | 2022-11-01 | 1d | 2022-11-01 | 2022-11-01 |  | start no earlier than 2022-11-01 | Dinh Huy Thien - MNG/TEST | 8h | 8h | 750,000 | 750,000 | 750,000 |
| 7 | 1.1.2.3 | Circuit design |  | 1d | 2022-11-01 A | 2022-11-01 A | 3 | 100% |  |  | 2022-11-01 | 2022-11-01 | 1d | 2022-11-01 | 2022-11-01 |  |  | Nguyen Tien Duong - ELEC | 8h | 8h | 400,000 | 400,000 | 400,000 |
| 8 | 1.1.2.4 | Requirements |  | 1d | 2022-11-01 A | 2022-11-01 A | 3 | 100% |  |  | 2022-11-01 | 2022-11-01 | 1d | 2022-11-01 | 2022-11-01 |  |  | Nguyen Trung Nguyen - BA | 8h | 8h | 600,000 | 600,000 | 600,000 |
| 9 | 1.1.3 | First meeting |  | 1h | 2022-11-03 A | 2022-11-03 | 5, 6, 8, 7 | 60% | 0.4h |  | 2022-11-03 | 2022-11-03 | 1h | 2022-11-03 | 2022-11-03 | 81.88d | start no earlier than 2022-11-03 | Dinh Huy Thien - MNG/TEST; Huynh Gia An Tien - NET; Lam Minh Quan - UI; Nguyen Khuong - FE; Nguyen Minh Anh - DB/BE; Nguyen Tien Duong - ELEC; Nguyen Trung Nguyen - BA | 5h | 3h | 356,250 | 356,250 | 231,250 |
| 10 | 1.2 | **Development phase** |  | 78d | 2022-11-03 A | 2023-02-20 |  | 55% | 34.75d |  | 2022-11-03 | 2023-02-20 | 78d | 2022-11-03 | 2023-02-20 |  |  |  | 772h | 460h | 58,425,000 | 58,425,000 | 30,650,000 |
| 11 | 1.2.1 | **Database setup** |  | 4d | 2022-11-04 A | 2022-11-09 A |  | 100% |  |  | 2022-11-04 | 2022-11-09 | 4d | 2022-11-04 | 2022-11-09 |  |  |  | 16h | 16h | 1,500,000 | 1,500,000 | 1,500,000 |
| 12 | 1.2.1.1 | Users module |  | 1d | 2022-11-04 A | 2022-11-07 A | 9 | 100% |  |  | 2022-11-04 | 2022-11-07 | 1d | 2022-11-04 | 2022-11-07 |  | start no earlier than 2022-11-06 | Nguyen Minh Anh - DB/BE | 8h | 8h | 750,000 | 750,000 | 750,000 |
| 13 | 1.2.1.2 | Device management module |  | 1d | 2022-11-09 A | 2022-11-09 A | 12 | 100% |  |  | 2022-11-09 | 2022-11-09 | 1d | 2022-11-09 | 2022-11-09 |  | start no earlier than 2022-11-09 | Nguyen Minh Anh - DB/BE | 8h | 8h | 750,000 | 750,000 | 750,000 |
| 14 | 1.2.2 | **Backend** |  | 20.88d | 2022-11-10 A | 2022-12-08 |  | 92% | 1.65d |  | 2022-11-10 | 2022-12-08 | 20.88d | 2022-11-10 | 2022-12-08 | 56.12d |  |  | 152h | 140h | 12,750,000 | 12,750,000 | 11,850,000 |
| 15 | 1.2.2.1 | **Authentication** |  | 2d | 2022-11-14 A | 2022-11-15 A |  | 100% |  |  | 2022-11-14 | 2022-11-15 | 2d | 2022-11-14 | 2022-11-15 |  |  |  | 32h | 32h | 3,000,000 | 3,000,000 | 3,000,000 |
| 16 | 1.2.2.1.1 | Register |  | 2d | 2022-11-14 A | 2022-11-15 A | 13 | 100% |  |  | 2022-11-14 | 2022-11-15 | 2d | 2022-11-14 | 2022-11-15 |  |  | Nguyen Minh Anh - DB/BE | 16h | 16h | 1,500,000 | 1,500,000 | 1,500,000 |
| 17 | 1.2.2.1.2 | Login |  | 2d | 2022-11-14 A | 2022-11-15 A | 13 | 100% |  |  | 2022-11-14 | 2022-11-15 | 2d | 2022-11-14 | 2022-11-15 |  |  | Nguyen Minh Anh - DB/BE | 16h | 16h | 1,500,000 | 1,500,000 | 1,500,000 |
| 18 | 1.2.2.2 | **Main features** |  | 5d | 2022-11-16 A | 2022-11-22 A |  | 100% |  |  | 2022-11-16 | 2022-11-22 | 5d | 2022-11-16 | 2022-11-22 |  |  |  | 40h | 40h | 3,750,000 | 3,750,000 | 3,750,000 |
| 19 | 1.2.2.2.1 | Device Controller module |  | 3d | 2022-11-16 A | 2022-11-22 A | 16, 17 | 100% |  |  | 2022-11-16 | 2022-11-22 | 3d | 2022-11-16 | 2022-11-22 |  |  | Nguyen Minh Anh - DB/BE | 24h | 24h | 2,250,000 | 2,250,000 | 2,250,000 |
| 20 | 1.2.2.2.2 | Automation module |  | 2d | 2022-11-16 A | 2022-11-21 A | 16, 17 | 100% |  |  | 2022-11-16 | 2022-11-21 | 2d | 2022-11-16 | 2022-11-21 |  |  | Nguyen Minh Anh - DB/BE | 16h | 16h | 1,500,000 | 1,500,000 | 1,500,000 |
| 21 | 1.2.2.3 | **Bug fixes** |  | 17.88d | 2022-11-15 | 2022-12-08 |  | 85% | 2.68d | 2022-11-10 | 2022-11-15 | 2022-12-08 | 17.88d | 2022-11-15 | 2022-12-08 |  |  |  | 80h | 68h | 6,000,000 | 6,000,000 | 5,100,000 |
| 22 | 1.2.2.3.1 | Bug fixes 1 |  | 0.5d | 2022-11-10 A | 2022-11-10 A |  | 100% |  |  | 2022-11-10 | 2022-11-10 | 0.5d | 2022-11-10 | 2022-11-10 |  | start no earlier than 2022-11-10 | Huynh Gia An Tien - NET | 4h | 4h | 300,000 | 300,000 | 300,000 |
| 23 | 1.2.2.3.2 | Bug fixes 2 |  | 0.5d | 2022-11-11 A | 2022-11-11 A |  | 100% |  |  | 2022-11-11 | 2022-11-11 | 0.5d | 2022-11-11 | 2022-11-11 |  | start no earlier than 2022-11-11 | Huynh Gia An Tien - NET | 4h | 4h | 300,000 | 300,000 | 300,000 |
| 24 | 1.2.2.3.3 | Bug fixes 3 |  | 0.5d | 2022-11-14 A | 2022-11-14 A |  | 100% |  |  | 2022-11-14 | 2022-11-14 | 0.5d | 2022-11-14 | 2022-11-14 |  | start no earlier than 2022-11-14 | Huynh Gia An Tien - NET | 4h | 4h | 300,000 | 300,000 | 300,000 |
| 25 | 1.2.2.3.4 | Bug fixes 4 |  | 0.5d | 2022-11-15 A | 2022-11-15 A |  | 100% |  |  | 2022-11-15 | 2022-11-15 | 0.5d | 2022-11-15 | 2022-11-15 |  | start no earlier than 2022-11-15 | Huynh Gia An Tien - NET | 4h | 4h | 300,000 | 300,000 | 300,000 |
| 26 | 1.2.2.3.5 | Bug fixes 5 |  | 0.5d | 2022-11-16 A | 2022-11-16 A |  | 100% |  |  | 2022-11-16 | 2022-11-16 | 0.5d | 2022-11-16 | 2022-11-16 |  | start no earlier than 2022-11-16 | Huynh Gia An Tien - NET | 4h | 4h | 300,000 | 300,000 | 300,000 |
| 27 | 1.2.2.3.6 | Bug fixes 6 |  | 0.5d | 2022-11-17 A | 2022-11-17 A |  | 100% |  |  | 2022-11-17 | 2022-11-17 | 0.5d | 2022-11-17 | 2022-11-17 |  | start no earlier than 2022-11-17 | Huynh Gia An Tien - NET | 4h | 4h | 300,000 | 300,000 | 300,000 |
| 28 | 1.2.2.3.7 | Bug fixes 7 |  | 0.5d | 2022-11-18 A | 2022-11-18 A |  | 100% |  |  | 2022-11-18 | 2022-11-18 | 0.5d | 2022-11-18 | 2022-11-18 |  | start no earlier than 2022-11-18 | Huynh Gia An Tien - NET | 4h | 4h | 300,000 | 300,000 | 300,000 |
| 29 | 1.2.2.3.8 | Bug fixes 8 |  | 0.5d | 2022-11-21 A | 2022-11-21 A |  | 100% |  |  | 2022-11-21 | 2022-11-21 | 0.5d | 2022-11-21 | 2022-11-21 |  | start no earlier than 2022-11-21 | Huynh Gia An Tien - NET | 4h | 4h | 300,000 | 300,000 | 300,000 |
| 30 | 1.2.2.3.9 | Bug fixes 9 |  | 0.5d | 2022-11-22 A | 2022-11-22 A |  | 100% |  |  | 2022-11-22 | 2022-11-22 | 0.5d | 2022-11-22 | 2022-11-22 |  | start no earlier than 2022-11-22 | Huynh Gia An Tien - NET | 4h | 4h | 300,000 | 300,000 | 300,000 |
| 31 | 1.2.2.3.10 | Bug fixes 10 |  | 0.5d | 2022-11-23 A | 2022-11-23 A |  | 100% |  |  | 2022-11-23 | 2022-11-23 | 0.5d | 2022-11-23 | 2022-11-23 |  | start no earlier than 2022-11-23 | Huynh Gia An Tien - NET | 4h | 4h | 300,000 | 300,000 | 300,000 |
| 32 | 1.2.2.3.11 | Bug fixes 11 |  | 0.5d | 2022-11-24 A | 2022-11-24 A |  | 100% |  |  | 2022-11-24 | 2022-11-24 | 0.5d | 2022-11-24 | 2022-11-24 |  | start no earlier than 2022-11-24 | Huynh Gia An Tien - NET | 4h | 4h | 300,000 | 300,000 | 300,000 |
| 33 | 1.2.2.3.12 | Bug fixes 12 |  | 0.5d | 2022-11-25 A | 2022-11-25 A |  | 100% |  |  | 2022-11-25 | 2022-11-25 | 0.5d | 2022-11-25 | 2022-11-25 |  | start no earlier than 2022-11-25 | Huynh Gia An Tien - NET | 4h | 4h | 300,000 | 300,000 | 300,000 |
| 34 | 1.2.2.3.13 | Bug fixes 13 |  | 0.5d | 2022-11-28 A | 2022-11-28 A |  | 100% |  |  | 2022-11-28 | 2022-11-28 | 0.5d | 2022-11-28 | 2022-11-28 |  | start no earlier than 2022-11-28 | Huynh Gia An Tien - NET | 4h | 4h | 300,000 | 300,000 | 300,000 |
| 35 | 1.2.2.3.14 | Bug fixes 14 |  | 0.5d | 2022-11-29 A | 2022-11-29 A |  | 100% |  |  | 2022-11-29 | 2022-11-29 | 0.5d | 2022-11-29 | 2022-11-29 |  | start no earlier than 2022-11-29 | Huynh Gia An Tien - NET | 4h | 4h | 300,000 | 300,000 | 300,000 |
| 36 | 1.2.2.3.15 | Bug fixes 15 |  | 0.5d | 2022-11-30 A | 2022-11-30 A |  | 100% |  |  | 2022-11-30 | 2022-11-30 | 0.5d | 2022-11-30 | 2022-11-30 |  | start no earlier than 2022-11-30 | Huynh Gia An Tien - NET | 4h | 4h | 300,000 | 300,000 | 300,000 |
| 37 | 1.2.2.3.16 | Bug fixes 16 |  | 0.5d | 2022-12-01 A | 2022-12-01 A |  | 100% |  |  | 2022-12-01 | 2022-12-01 | 0.5d | 2022-12-01 | 2022-12-01 |  | start no earlier than 2022-12-01 | Huynh Gia An Tien - NET | 4h | 4h | 300,000 | 300,000 | 300,000 |
| 38 | 1.2.2.3.17 | Bug fixes 17 |  | 0.5d | 2022-12-02 A | 2022-12-02 A |  | 100% |  |  | 2022-12-02 | 2022-12-02 | 0.5d | 2022-12-02 | 2022-12-02 |  | start no earlier than 2022-12-02 | Huynh Gia An Tien - NET | 4h | 4h | 300,000 | 300,000 | 300,000 |
| 39 | 1.2.2.3.18 | Bug fixes 18 |  | 0.5d | 2022-12-05 | 2022-12-05 |  |  |  |  | 2022-12-05 | 2022-12-05 | 0.5d | 2022-12-05 | 2022-12-05 | 59.5d | start no earlier than 2022-12-05 | Huynh Gia An Tien - NET | 4h |  | 300,000 | 300,000 |  |
| 40 | 1.2.2.3.19 | Bug fixes 19 |  | 0.5d | 2022-12-06 | 2022-12-06 |  |  |  |  | 2022-12-06 | 2022-12-06 | 0.5d | 2022-12-06 | 2022-12-06 | 58.5d | start no earlier than 2022-12-06 | Huynh Gia An Tien - NET | 4h |  | 300,000 | 300,000 |  |
| 41 | 1.2.2.3.20 | Bug fixes 20 |  | 0.5d | 2022-12-07 | 2022-12-07 |  |  |  |  | 2022-12-07 | 2022-12-07 | 0.5d | 2022-12-07 | 2022-12-07 | 57.5d | start no earlier than 2022-12-07 | Huynh Gia An Tien - NET | 4h |  | 300,000 | 300,000 |  |

| ID | WBS | Task | Duration | Start | Finish | Predecessors | Complete | Remaining | Baseline start | Baseline finish | Baseline duration | Baseline 1 start | Baseline 1 finish | Total slack | Free slack | Constraint | Resources | Work | Actual work | Cost | Baseline cost | Actual cost |
| --- | --- | --- | --- | --- | --- | --- | --- | --- | --- | --- | --- | --- | --- | --- | --- | --- | --- | --- | --- | --- | --- | --- |
| 42 | 1.2.3 | **UI / UX designing** | 4d | 2022-11-03 A | 2022-11-09 A |  | 100% |  | 2022-11-03 | 2022-11-09 | 4d | 2022-11-03 | 2022-11-09 |  |  |  |  | 32h | 32h | 2,000,000 | 2,000,000 | 2,000,000 |
| 43 | 1.2.3.1 | Color scheme | 2d | 2022-11-03 A | 2022-11-07 A | 9 | 100% |  | 2022-11-03 | 2022-11-07 | 2d | 2022-11-03 | 2022-11-07 |  |  |  | Lam Minh Quan - UI | 16h | 16h | 1,000,000 | 1,000,000 | 1,000,000 |
| 44 | 1.2.3.2 | **App** | 2d | 2022-11-07 A | 2022-11-09 A |  | 100% |  | 2022-11-07 | 2022-11-09 | 2d | 2022-11-07 | 2022-11-09 |  |  |  |  | 16h | 16h | 1,000,000 | 1,000,000 | 1,000,000 |
| 45 | 1.2.3.2.1 | Wireframe | 1d | 2022-11-07 A | 2022-11-08 A | 43 | 100% |  | 2022-11-07 | 2022-11-08 | 1d | 2022-11-07 | 2022-11-08 |  |  |  | Lam Minh Quan - UI | 8h | 8h | 500,000 | 500,000 | 500,000 |
| 46 | 1.2.3.2.2 | Main Uis | 1d | 2022-11-08 A | 2022-11-09 A | 45 | 100% |  | 2022-11-08 | 2022-11-09 | 1d | 2022-11-08 | 2022-11-09 |  |  |  | Lam Minh Quan - UI | 8h | 8h | 500,000 | 500,000 | 500,000 |
| 47 | 1.2.4 | **Front-end** | 22d | 2022-11-15 A | 2022-12-14 |  | 73% | 5.89d | 2022-11-15 | 2022-12-14 | 22d | 2022-11-15 | 2022-12-14 | 52d |  |  |  | 176h | 136h | 11,000,000 | 11,000,000 | 8,500,000 |
| 48 | 1.2.4.1 | **Authentication** | 3d | 2022-11-23 A | 2022-11-25 A |  | 100% |  | 2022-11-23 | 2022-11-25 | 3d | 2022-11-16 | 2022-11-25 |  |  |  |  | 16h | 16h | 1,000,000 | 1,000,000 | 1,000,000 |
| 49 | 1.2.4.1.1 | Register | 2d | 2022-11-23 A | 2022-11-25 A | 46, 19, 20 | 100% |  | 2022-11-23 | 2022-11-25 | 2d | 2022-11-23 | 2022-11-25 |  |  |  | Nguyen Khuong - FE [50%] | 8h | 8h | 500,000 | 500,000 | 500,000 |
| 50 | 1.2.4.1.2 | Login | 2d | 2022-11-23 A | 2022-11-25 A | 46, 19, 20 | 100% |  | 2022-11-23 | 2022-11-25 | 2d | 2022-11-23 | 2022-11-25 |  |  |  | Nguyen Khuong - FE [50%] | 8h | 8h | 500,000 | 500,000 | 500,000 |
| 51 | 1.2.4.2 | **Main features** | 22d | 2022-11-15 A | 2022-12-14 |  | 69% | 6.88d | 2022-11-15 | 2022-12-14 | 22d | 2022-11-15 | 2022-12-14 | 52d |  |  |  | 160h | 120h | 10,000,000 | 10,000,000 | 7,500,000 |
| 52 | 1.2.4.2.1 | Device Controller module | 4d | 2022-11-29 A | 2022-12-06 | 50, 49 | 75% | 1d | 2022-11-29 | 2022-12-06 | 4d | 2022-11-29 | 2022-12-06 | 21d | 0d |  | Nguyen Khuong - FE [50%] | 16h | 12h | 1,000,000 | 1,000,000 | 750,000 |
| 53 | 1.2.4.2.2 | Automation module | 4d | 2022-12-07 | 2022-12-14 | 52 |  |  | 2022-12-07 | 2022-12-14 | 4d | 2022-12-07 | 2022-12-14 | 21.5d | 17d |  | Nguyen Khuong - FE [50%] | 16h |  | 1,000,000 | 1,000,000 |  |
| 54 | 1.2.4.2.3 | **Bug fixes** | 17d | 2022-11-15 A | 2022-12-07 |  | 84% | 2.66d | 2022-11-15 | 2022-12-07 | 17d | 2022-11-15 | 2022-12-07 | 57d |  |  |  | 128h | 108h | 8,000,000 | 8,000,000 | 6,750,000 |
| 55 | 1.2.4.2.3.1 | Bug fixes 1 | 1d | 2022-11-15 A | 2022-11-15 A |  | 100% |  | 2022-11-15 | 2022-11-15 | 1d | 2022-11-15 | 2022-11-15 |  |  | start no earlier than 2022-11-15 | Nguyen Khuong - FE | 8h | 8h | 500,000 | 500,000 | 500,000 |
| 56 | 1.2.4.2.3.2 | Bug fixes 2 | 1d | 2022-11-16 A | 2022-11-16 A |  | 100% |  | 2022-11-16 | 2022-11-16 | 1d | 2022-11-16 | 2022-11-16 |  |  | start no earlier than 2022-11-16 | Nguyen Khuong - FE | 8h | 8h | 500,000 | 500,000 | 500,000 |
| 57 | 1.2.4.2.3.3 | Bug fixes 3 | 1d | 2022-11-17 A | 2022-11-18 A |  | 100% |  | 2022-11-17 | 2022-11-18 | 1d | 2022-11-17 | 2022-11-18 |  |  | start no earlier than 2022-11-17 | Nguyen Khuong - FE | 8h | 8h | 500,000 | 500,000 | 500,000 |
| 58 | 1.2.4.2.3.4 | Bug fixes 4 | 1d | 2022-11-18 A | 2022-11-22 A |  | 100% |  | 2022-11-18 | 2022-11-22 | 1d | 2022-11-18 | 2022-11-22 |  |  | start no earlier than 2022-11-18 | Nguyen Khuong - FE | 8h | 8h | 500,000 | 500,000 | 500,000 |
| 59 | 1.2.4.2.3.5 | Bug fixes 5 | 1d | 2022-11-22 A | 2022-11-22 A |  | 100% |  | 2022-11-22 | 2022-11-22 | 1d | 2022-11-22 | 2022-11-22 |  |  | start no earlier than 2022-11-21 | Nguyen Khuong - FE | 8h | 8h | 500,000 | 500,000 | 500,000 |
| 60 | 1.2.4.2.3.6 | Bug fixes 6 | 1d | 2022-11-22 A | 2022-11-22 A |  | 100% |  | 2022-11-22 | 2022-11-22 | 1d | 2022-11-22 | 2022-11-22 |  |  | start no earlier than 2022-11-22 | Nguyen Khuong - FE | 8h | 8h | 500,000 | 500,000 | 500,000 |
| 61 | 1.2.4.2.3.7 | Bug fixes 7 | 1d | 2022-11-23 A | 2022-11-23 A |  | 100% |  | 2022-11-23 | 2022-11-23 | 1d | 2022-11-23 | 2022-11-23 |  |  | start no earlier than 2022-11-23 | Nguyen Khuong - FE | 8h | 8h | 500,000 | 500,000 | 500,000 |
| 62 | 1.2.4.2.3.8 | Bug fixes 8 | 1d | 2022-11-24 A | 2022-11-25 A |  | 100% |  | 2022-11-24 | 2022-11-25 | 1d | 2022-11-24 | 2022-11-25 |  |  | start no earlier than 2022-11-24 | Nguyen Khuong - FE | 8h | 8h | 500,000 | 500,000 | 500,000 |
| 63 | 1.2.4.2.3.9 | Bug fixes 9 | 1d | 2022-11-25 A | 2022-11-29 A |  | 100% |  | 2022-11-25 | 2022-11-29 | 1d | 2022-11-25 | 2022-11-29 |  |  | start no earlier than 2022-11-25 | Nguyen Khuong - FE | 8h | 8h | 500,000 | 500,000 | 500,000 |
| 64 | 1.2.4.2.3.10 | Bug fixes 10 | 1d | 2022-11-29 A | 2022-11-29 A |  | 100% |  | 2022-11-29 | 2022-11-29 | 1d | 2022-11-29 | 2022-11-29 |  |  | start no earlier than 2022-11-28 | Nguyen Khuong - FE | 8h | 8h | 500,000 | 500,000 | 500,000 |
| 65 | 1.2.4.2.3.11 | Bug fixes 11 | 1d | 2022-11-29 A | 2022-11-29 A |  | 100% |  | 2022-11-29 | 2022-11-29 | 1d | 2022-11-29 | 2022-11-29 |  |  | start no earlier than 2022-11-29 | Nguyen Khuong - FE | 8h | 8h | 500,000 | 500,000 | 500,000 |
| 66 | 1.2.4.2.3.12 | Bug fixes 12 | 1d | 2022-11-30 A | 2022-11-30 A |  | 100% |  | 2022-11-30 | 2022-11-30 | 1d | 2022-11-30 | 2022-11-30 |  |  | start no earlier than 2022-11-30 | Nguyen Khuong - FE | 8h | 8h | 500,000 | 500,000 | 500,000 |
| 67 | 1.2.4.2.3.13 | Bug fixes 13 | 1d | 2022-12-01 A | 2022-12-02 A |  | 100% |  | 2022-12-01 | 2022-12-02 | 1d | 2022-12-01 | 2022-12-02 |  |  | start no earlier than 2022-12-01 | Nguyen Khuong - FE | 8h | 8h | 500,000 | 500,000 | 500,000 |
| 68 | 1.2.4.2.3.14 | Bug fixes 14 | 1d | 2022-12-02 A | 2022-12-06 |  | 50% | 0.5d | 2022-12-02 | 2022-12-06 | 1d | 2022-12-02 | 2022-12-06 | 58.5d |  | start no earlier than 2022-12-02 | Nguyen Khuong - FE | 8h | 4h | 500,000 | 500,000 | 250,000 |
| 69 | 1.2.4.2.3.15 | Bug fixes 15 | 1d | 2022-12-06 | 2022-12-06 |  |  |  | 2022-12-06 | 2022-12-06 | 1d | 2022-12-06 | 2022-12-06 | 57.5d |  | start no earlier than 2022-12-05 | Nguyen Khuong - FE | 8h |  | 500,000 | 500,000 |  |
| 70 | 1.2.4.2.3.16 | Bug fixes 16 | 1d | 2022-12-07 | 2022-12-07 |  |  |  | 2022-12-07 | 2022-12-07 | 1d | 2022-12-07 | 2022-12-07 | 56.5d |  | start no earlier than 2022-12-07 | Nguyen Khuong - FE | 8h |  | 500,000 | 500,000 |  |

| ID | WBS | Task | Type | Duration | Start | Finish | Predecessors | Complete | Remaining | Baseline start | Baseline finish | Baseline duration | Baseline 1 start | Baseline 1 finish | Total slack | Constraint | Resources | Work | Actual work | Cost | Baseline cost | Actual cost |
| --- | --- | --- | --- | --- | --- | --- | --- | --- | --- | --- | --- | --- | --- | --- | --- | --- | --- | --- | --- | --- | --- | --- |
| 71 | 1.2.5 | **Circuits** |  | 17d | 2022-11-04 A | 2022-11-28 A |  | 100% |  | 2022-11-04 | 2022-11-28 | 17d | 2022-11-04 | 2022-11-28 |  |  |  | 136h | 136h | 6,800,000 | 6,800,000 | 6,800,000 |
| 72 | 1.2.5.1 | Build the circuit from design |  | 4d | 2022-11-04 A | 2022-11-09 A | 2 | 100% |  | 2022-11-04 | 2022-11-09 | 4d | 2022-11-04 | 2022-11-09 |  |  | Nguyen Tien Duong - ELEC | 32h | 32h | 1,600,000 | 1,600,000 | 1,600,000 |
| 73 | 1.2.5.2 | Create connection to the application |  | 2d | 2022-11-10 A | 2022-11-11 A | 72 | 100% |  | 2022-11-10 | 2022-11-11 | 2d | 2022-11-10 | 2022-11-11 |  |  | Nguyen Tien Duong - ELEC | 16h | 16h | 800,000 | 800,000 | 800,000 |
| 74 | 1.2.5.3 | **Resolve problems** |  | 11d | 2022-11-14 A | 2022-11-28 A |  | 100% |  | 2022-11-14 | 2022-11-28 | 11d | 2022-11-14 | 2022-11-28 |  |  |  | 88h | 88h | 4,400,000 | 4,400,000 | 4,400,000 |
| 75 | 1.2.5.3.1 | Resolve problems 1 |  | 1d | 2022-11-14 A | 2022-11-14 A | 73 | 100% |  | 2022-11-14 | 2022-11-14 | 1d | 2022-11-14 | 2022-11-14 |  | start no earlier than 2022-11-14 | Nguyen Tien Duong - ELEC | 8h | 8h | 400,000 | 400,000 | 400,000 |
| 76 | 1.2.5.3.2 | Resolve problems 2 |  | 1d | 2022-11-15 A | 2022-11-15 A | 75 | 100% |  | 2022-11-15 | 2022-11-15 | 1d | 2022-11-15 | 2022-11-15 |  | start no earlier than 2022-11-15 | Nguyen Tien Duong - ELEC | 8h | 8h | 400,000 | 400,000 | 400,000 |
| 77 | 1.2.5.3.3 | Resolve problems 3 |  | 1d | 2022-11-16 A | 2022-11-16 A | 76 | 100% |  | 2022-11-16 | 2022-11-16 | 1d | 2022-11-16 | 2022-11-16 |  | start no earlier than 2022-11-16 | Nguyen Tien Duong - ELEC | 8h | 8h | 400,000 | 400,000 | 400,000 |
| 78 | 1.2.5.3.4 | Resolve problems 4 |  | 1d | 2022-11-17 A | 2022-11-17 A | 77 | 100% |  | 2022-11-17 | 2022-11-17 | 1d | 2022-11-17 | 2022-11-17 |  | start no earlier than 2022-11-17 | Nguyen Tien Duong - ELEC | 8h | 8h | 400,000 | 400,000 | 400,000 |
| 79 | 1.2.5.3.5 | Resolve problems 5 |  | 1d | 2022-11-18 A | 2022-11-18 A | 78 | 100% |  | 2022-11-18 | 2022-11-18 | 1d | 2022-11-18 | 2022-11-18 |  | start no earlier than 2022-11-18 | Nguyen Tien Duong - ELEC | 8h | 8h | 400,000 | 400,000 | 400,000 |
| 80 | 1.2.5.3.6 | Resolve problems 6 |  | 1d | 2022-11-21 A | 2022-11-21 A | 79 | 100% |  | 2022-11-21 | 2022-11-21 | 1d | 2022-11-21 | 2022-11-21 |  | start no earlier than 2022-11-21 | Nguyen Tien Duong - ELEC | 8h | 8h | 400,000 | 400,000 | 400,000 |
| 81 | 1.2.5.3.7 | Resolve problems 7 |  | 1d | 2022-11-22 A | 2022-11-22 A | 80 | 100% |  | 2022-11-22 | 2022-11-22 | 1d | 2022-11-22 | 2022-11-22 |  | start no earlier than 2022-11-22 | Nguyen Tien Duong - ELEC | 8h | 8h | 400,000 | 400,000 | 400,000 |
| 82 | 1.2.5.3.8 | Resolve problems 8 |  | 1d | 2022-11-23 A | 2022-11-23 A | 81 | 100% |  | 2022-11-23 | 2022-11-23 | 1d | 2022-11-23 | 2022-11-23 |  | start no earlier than 2022-11-23 | Nguyen Tien Duong - ELEC | 8h | 8h | 400,000 | 400,000 | 400,000 |
| 83 | 1.2.5.3.9 | Resolve problems 9 |  | 1d | 2022-11-24 A | 2022-11-24 A | 82 | 100% |  | 2022-11-24 | 2022-11-24 | 1d | 2022-11-24 | 2022-11-24 |  | start no earlier than 2022-11-24 | Nguyen Tien Duong - ELEC | 8h | 8h | 400,000 | 400,000 | 400,000 |
| 84 | 1.2.5.3.10 | Resolve problems 10 |  | 1d | 2022-11-25 A | 2022-11-25 A | 83 | 100% |  | 2022-11-25 | 2022-11-25 | 1d | 2022-11-25 | 2022-11-25 |  | start no earlier than 2022-11-25 | Nguyen Tien Duong - ELEC | 8h | 8h | 400,000 | 400,000 | 400,000 |
| 85 | 1.2.5.3.11 | Resolve problems 11 |  | 1d | 2022-11-28 A | 2022-11-28 A | 84 | 100% |  | 2022-11-28 | 2022-11-28 | 1d | 2022-11-28 | 2022-11-28 |  | start no earlier than 2022-11-28 | Nguyen Tien Duong - ELEC | 8h | 8h | 400,000 | 400,000 | 400,000 |
| 86 | 1.2.6 | **Others** |  | 76d | 2022-11-03 A | 2023-02-16 |  |  | 76d | 2022-11-03 | 2023-02-16 | 76d | 2022-11-03 | 2023-02-16 | 6d |  |  | 260h |  | 24,375,000 | 24,375,000 |  |
| 87 | 1.2.6.1 | **Meeting (3 workdays period)** |  | 24d | 2022-11-03 A | 2022-12-07 |  |  | 24d | 2022-11-03 | 2022-12-07 | 24d | 2022-11-03 | 2022-12-07 | 58d |  |  |  |  |  |  |  |
| 88 | 1.2.6.1.1 | Meeting 1 | milestone | 0d | 2022-11-03 A | 2022-11-03 A |  | 100% |  | 2022-11-03 | 2022-11-03 | 0d | 2022-11-03 | 2022-11-03 |  | start no earlier than 2022-11-03 | Dinh Huy Thien - MNG/TEST; Lam Minh Quan - UI; Huynh Gia An Tien - NET; Nguyen Trung Nguyen - BA; Nguyen Minh Anh - DB/BE; Nguyen Khuong - FE; Nguyen Tien Duong - ELEC |  |  |  |  |  |
| 89 | 1.2.6.1.2 | Meeting 2 | milestone | 0d | 2022-11-08 A | 2022-11-08 A |  | 100% |  | 2022-11-08 | 2022-11-08 | 0d | 2022-11-08 | 2022-11-08 |  | start no earlier than 2022-11-08 | Dinh Huy Thien - MNG/TEST; Lam Minh Quan - UI; Huynh Gia An Tien - NET; Nguyen Trung Nguyen - BA; Nguyen Minh Anh - DB/BE; Nguyen Khuong - FE; Nguyen Tien Duong - ELEC |  |  |  |  |  |
| 90 | 1.2.6.1.3 | Meeting 3 | milestone | 0d | 2022-11-11 A | 2022-11-11 A |  | 100% |  | 2022-11-11 | 2022-11-11 | 0d | 2022-11-11 | 2022-11-11 |  | start no earlier than 2022-11-11 | Dinh Huy Thien - MNG/TEST; Lam Minh Quan - UI; Huynh Gia An Tien - NET; Nguyen Trung Nguyen - BA; Nguyen Minh Anh - DB/BE; Nguyen Khuong - FE; Nguyen Tien Duong - ELEC |  |  |  |  |  |
| 91 | 1.2.6.1.4 | Meeting 4 | milestone | 0d | 2022-11-16 A | 2022-11-16 A |  | 100% |  | 2022-11-16 | 2022-11-16 | 0d | 2022-11-16 | 2022-11-16 |  | start no earlier than 2022-11-16 | Dinh Huy Thien - MNG/TEST; Lam Minh Quan - UI; Huynh Gia An Tien - NET; Nguyen Trung Nguyen - BA; Nguyen Minh Anh - DB/BE; Nguyen Khuong - FE; Nguyen Tien Duong - ELEC |  |  |  |  |  |
| 92 | 1.2.6.1.5 | Meeting 5 | milestone | 0d | 2022-11-21 A | 2022-11-21 A |  | 100% |  | 2022-11-21 | 2022-11-21 | 0d | 2022-11-21 | 2022-11-21 |  | start no earlier than 2022-11-21 | Dinh Huy Thien - MNG/TEST; Lam Minh Quan - UI; Huynh Gia An Tien - NET; Nguyen Trung Nguyen - BA; Nguyen Minh Anh - DB/BE; Nguyen Khuong - FE; Nguyen Tien Duong - ELEC |  |  |  |  |  |
| 93 | 1.2.6.1.6 | Meeting 6 | milestone | 0d | 2022-11-24 A | 2022-11-24 A |  | 100% |  | 2022-11-24 | 2022-11-24 | 0d | 2022-11-24 | 2022-11-24 |  | start no earlier than 2022-11-24 | Dinh Huy Thien - MNG/TEST; Lam Minh Quan - UI; Huynh Gia An Tien - NET; Nguyen Trung Nguyen - BA; Nguyen Minh Anh - DB/BE; Nguyen Khuong - FE; Nguyen Tien Duong - ELEC |  |  |  |  |  |
| 94 | 1.2.6.1.7 | Meeting 7 | milestone | 0d | 2022-11-29 A | 2022-11-29 A |  | 100% |  | 2022-11-29 | 2022-11-29 | 0d | 2022-11-29 | 2022-11-29 |  | start no earlier than 2022-11-29 | Dinh Huy Thien - MNG/TEST; Lam Minh Quan - UI; Huynh Gia An Tien - NET; Nguyen Trung Nguyen - BA; Nguyen Minh Anh - DB/BE; Nguyen Khuong - FE; Nguyen Tien Duong - ELEC |  |  |  |  |  |
| 95 | 1.2.6.1.8 | Meeting 8 | milestone | 0d | 2022-12-02 A | 2022-12-02 A |  | 100% |  | 2022-12-02 | 2022-12-02 | 0d | 2022-12-02 | 2022-12-02 |  | start no earlier than 2022-12-02 | Dinh Huy Thien - MNG/TEST; Lam Minh Quan - UI; Huynh Gia An Tien - NET; Nguyen Trung Nguyen - BA; Nguyen Minh Anh - DB/BE; Nguyen Khuong - FE; Nguyen Tien Duong - ELEC |  |  |  |  |  |
| 96 | 1.2.6.1.9 | Meeting 9 | milestone | 0d | 2022-12-07 | 2022-12-07 |  |  |  | 2022-12-07 | 2022-12-07 | 0d | 2022-12-07 | 2022-12-07 | 58d | start no earlier than 2022-12-07 | Dinh Huy Thien - MNG/TEST; Lam Minh Quan - UI; Huynh Gia An Tien - NET; Nguyen Trung Nguyen - BA; Nguyen Minh Anh - DB/BE; Nguyen Khuong - FE; Nguyen Tien Duong - ELEC |  |  |  |  |  |

| ID | WBS | Task | Duration | Start | Finish | Predecessors | Baseline start | Baseline finish | Baseline duration | Baseline 1 start | Baseline 1 finish | Total slack | Free slack | Resources | Work | Cost | Baseline cost |
| --- | --- | --- | --- | --- | --- | --- | --- | --- | --- | --- | --- | --- | --- | --- | --- | --- | --- |
| 97 | 1.2.6.2 | **Testing** | 30d | 2023-01-07 | 2023-02-16 |  | 2023-01-07 | 2023-02-16 | 30d | 2023-01-07 | 2023-02-16 |  |  |  | 260h | 24,375,000 | 24,375,000 |
| 98 | 1.2.6.2.1 | Back-end | 10d | 2023-01-09 | 2023-01-20 | 53, 85 | 2023-01-09 | 2023-01-20 | 10d | 2023-01-09 | 2023-01-20 | 5d | 0d | Dinh Huy Thien - MNG/TEST | 80h | 7,500,000 | 7,500,000 |
| 99 | 1.2.6.2.2 | Front-end | 15d | 2023-01-23 | 2023-02-10 | 98 | 2023-01-23 | 2023-02-10 | 15d | 2023-01-23 | 2023-02-10 | 5d | 0d | Dinh Huy Thien - MNG/TEST | 120h | 11,250,000 | 11,250,000 |
| 100 | 1.2.6.2.3 | Circuits | 15d | 2023-01-23 | 2023-02-10 | 98 | 2023-01-23 | 2023-02-10 | 15d | 2023-01-23 | 2023-02-10 | 5d | 0d | Dinh Huy Thien - MNG/TEST [50%] | 60h | 5,625,000 | 5,625,000 |
| 101 | 1.3 | **Deployment Phase** | 6d | 2023-02-13 | 2023-02-20 |  | 2023-02-13 | 2023-02-20 | 6d | 2023-02-13 | 2023-02-20 |  |  |  | 40h | 2,600,000 | 2,600,000 |
| 102 | 1.3.1 | **Annouce to users** | 2d | 2023-02-13 | 2023-02-14 |  | 2023-02-13 | 2023-02-14 | 2d | 2023-02-13 | 2023-02-14 | 5d |  |  | 16h | 1,200,000 | 1,200,000 |
| 103 | 1.3.1.1 | Deployment schedule | 1d | 2023-02-13 | 2023-02-13 | 100, 99 | 2023-02-13 | 2023-02-13 | 1d | 2023-02-13 | 2023-02-13 | 5d | 0d | Nguyen Trung Nguyen - BA | 8h | 600,000 | 600,000 |
| 104 | 1.3.1.2 | Brief discription of new system | 1d | 2023-02-14 | 2023-02-14 | 103 | 2023-02-14 | 2023-02-14 | 1d | 2023-02-14 | 2023-02-14 | 5d | 0d | Nguyen Trung Nguyen - BA | 8h | 600,000 | 600,000 |
| 105 | 1.3.2 | Execute the Training Plan | 1d | 2023-02-15 | 2023-02-15 | 104 | 2023-02-15 | 2023-02-15 | 1d | 2023-02-15 | 2023-02-15 | 5d | 0d | Nguyen Tien Duong - ELEC | 8h | 400,000 | 400,000 |
| 106 | 1.3.3 | Install the system | 1d | 2023-02-16 | 2023-02-16 | 105 | 2023-02-16 | 2023-02-16 | 1d | 2023-02-16 | 2023-02-16 | 5d | 0d | Nguyen Tien Duong - ELEC | 8h | 400,000 | 400,000 |
| 107 | 1.3.4 | Post-Deployment Review | 1d | 2023-02-17 | 2023-02-17 | 106 | 2023-02-17 | 2023-02-17 | 1d | 2023-02-17 | 2023-02-17 | 5d |  | Nguyen Trung Nguyen - BA | 8h | 600,000 | 600,000 |
